# Management_Project_2

Schedule from MS Project, 2025-10-20 to 2029-02-15.

## Calendars

- TCD Holidays: Mon-Fri 08:00-12:00, 13:00-17:00; Sat-Sun off. Exceptions (off unless hours are given): 2025-10-27 to 2034-10-30 (October Bank Holidays, recurring), 2025-12-27 to 2025-12-31 (Christmas Holidays), 2026-01-01 to 2035-01-01 (New Years Day, recurring), 2026-04-06 (Easter Monday), 2026-10-26 to 2035-12-25 (Christmas Day, recurring), 2026-10-26 to 2035-12-26 (St. Stephen's Day, recurring), 2026-10-26 to 2036-02-04 (St. Bridget's Day, recurring), 2026-10-26 to 2036-03-17 (St Patricks Day, recurring), 2026-10-26 to 2036-05-05 (May Day, recurring), 2026-12-26 to 2036-06-02 (June Bank Holiday, recurring), 2026-12-26 to 2036-08-04 (August Bank Holiday, recurring), 2026-12-27 to 2026-12-31 (Christmas Holidays), 2027-03-29 (Easter Monday), 2027-12-27 to 2027-12-31 (Christmas Holidays), 2028-04-19 (Easter Monday), 2028-12-27 to 2028-12-31 (Christmas Holidays).
- Reduced Hours During Demolition: Mon-Fri 12:00-16:00; Sat-Sun off. Exceptions (off unless hours are given): 2025-10-27 to 2034-10-30 (October Bank Holidays, recurring), 2025-12-27 to 2025-12-31 (Christmas Holidays), 2026-01-01 to 2035-01-01 (New Years Day, recurring), 2026-04-06 (Easter Monday), 2026-10-26 to 2035-12-25 (Christmas Day, recurring), 2026-10-26 to 2035-12-26 (St. Stephen's Day, recurring), 2026-10-26 to 2036-02-04 (St. Bridget's Day, recurring), 2026-10-26 to 2036-03-17 (St Patricks Day, recurring), 2026-10-26 to 2036-05-05 (May Day, recurring), 2026-12-26 to 2036-06-02 (June Bank Holiday, recurring), 2026-12-26 to 2036-08-04 (August Bank Holiday, recurring), 2026-12-27 to 2026-12-31 (Christmas Holidays), 2027-03-29 (Easter Monday), 2027-12-27 to 2027-12-31 (Christmas Holidays), 2028-04-19 (Easter Monday), 2028-12-27 to 2028-12-31 (Christmas Holidays).

## Resources

| Resource |
| --- |
| Design Team |
| Project management group |
| Construction Team |
| Technitians |
| Procurement Officers |

## Schedule

| ID | WBS | Task | Type | Duration | Start | Finish | Predecessors | Total slack | Free slack | Constraint | Calendar | Resources | Work |
| --- | --- | --- | --- | --- | --- | --- | --- | --- | --- | --- | --- | --- | --- |
| 1 | 1 | **Planning and Approvals** |  | 210d | 2025-10-20 | 2026-08-17 |  | 0.5d |  |  |  |  | 2640h |
| 2 | 1.1 | Needs Assessment and Feasibility Study |  | 6w | 2025-10-20 | 2025-12-01 |  | 0.5d | 0d |  |  | Project management group [200%]; Design Team | 720h |
| 3 | 1.2 | Equipment Specification with vendor |  | 8w | 2025-12-02 | 2026-01-30 | 2 | 0.5d | 0d |  |  | Project management group [300%] | 960h |
| 4 | 1.3 | Radiation Safety & RF shielding review |  | 6w | 2026-02-02 | 2026-03-13 | 3 | 0.5d | 0d |  |  | Project management group; Design Team [200%] | 720h |
| 5 | 1.4 | Hospital Design Control Committee Approval |  | 2w | 2026-03-16 | 2026-03-27 | 4 | 0.5d | 0d |  |  | Project management group [300%] | 240h |
| 6 | 1.5 | Planning & Fire Cert submission | milestone | 0d | 2026-03-27 | 2026-03-27 | 5 | 0.5d | 0d |  |  | Project management group [50%] |  |
| 7 | 1.6 | Approval Received |  | 20w | 2026-03-27 | 2026-08-17 | 6 | 0.5d | 0d |  |  | Project management group |  |
| 8 | 2 | **Design & Procurement** |  | 250d | 2026-08-18 | 2027-08-19 |  | 0.5d |  |  |  |  | 4320h |
| 9 | 2.1 | Detailed architechture & services design |  | 8w | 2026-08-18 | 2026-10-12 | 7 | 0.5d | 0d |  |  | Design Team [300%] | 960h |
| 10 | 2.2 | **M&E Coordination(HVAC, Electrical, Cooling)** |  | 50d | 2026-10-13 | 2026-12-22 | 9 | 0.5d | 0d |  |  |  | 880h |
| 11 | 2.2.1 | M&E Information and Constraints Review |  | 2w | 2026-10-13 | 2026-10-27 | 9 | 0.5d | 0d |  |  | Design Team; Project management group | 160h |
| 12 | 2.2.2 | Develop Initial M&E Layouts |  | 6w | 2026-10-28 | 2026-12-08 | 11 | 20.5d |  |  |  | Design Team [150%] | 360h |
| 13 | 2.2.3 | Clash Resolution, Shutdown Strategy and Final Sign-off |  | 6w | 2026-11-11 | 2026-12-22 | 11FS+2w | 0.5d |  | finish no earlier than 2026-10-13 |  | Design Team [150%] | 360h |
| 14 | 2.3 | **RF Shielding Design & Testing Plan** |  | 30d | 2026-12-23 | 2027-02-11 | 10 | 0.5d | 0d |  |  |  | 840h |
| 15 | 2.3.1 | RF Requirements Review and Conceptual Layout |  | 2w | 2026-12-23 | 2027-01-13 | 10 | 30.5d |  |  |  | Project management group; Construction Team [150%] | 200h |
| 16 | 2.3.2 | RF Enclosure Design and Costing |  | 4w | 2027-01-07 | 2027-02-04 | 10FS+1w | 15.5d |  |  |  | Design Team [150%] | 240h |
| 17 | 2.3.3 | RF Procurement, Schedule, and Testing Plan |  | 4w | 2027-01-14 | 2027-02-11 | 10FS+2w | 0.5d |  |  |  | Design Team [150%]; Project management group | 400h |
| 18 | 2.4 | Equipment Procurement (MRI & Ancillaries) |  | 16w | 2027-02-12 | 2027-06-09 | 14 | 0.5d | 0d |  |  | Procurement Officers | 640h |
| 19 | 2.5 | Tender for Construction Works |  | 6w | 2027-06-10 | 2027-07-21 | 18 | 0.5d | 0d |  |  | Procurement Officers; Project management group [50%] | 360h |
| 20 | 2.6 | Contractor Mobilisation |  | 4w | 2027-07-22 | 2027-08-19 | 19 | 0.5d | 0d |  |  | Construction Team [200%]; Technitians [200%] | 640h |
| 21 | 3 | **Construction & Isolation** |  | 369.88d | 2027-08-20 | 2029-02-15 | 20 | 0d |  |  |  |  | 5600h |
| 22 | 3.1 | Site Set-Up & Isolation Works |  | 4w | 2027-08-20 | 2027-09-16 | 20 | 0.5d |  |  |  | Construction Team [200%] | 320h |
| 23 | 3.2 | Demolition & Refurbishment |  | 8w | 2027-09-17 | 2028-01-14 | 22 | 0d |  |  | Reduced Hours During Demolition | Construction Team [200%] | 640h |
| 24 | 3.3 | M&E Rough-In (Cabling, Piping, HVAC) |  | 10w | 2028-01-14 | 2028-03-28 | 23 | 0d |  |  |  | Construction Team; Technitians [200%] | 1200h |

Notes:
- 23: Reduced Working Hours Due to Outpatient Clinic Hours

| ID | WBS | Task | Duration | Start | Finish | Predecessors | Total slack | Calendar | Resources | Work |
| --- | --- | --- | --- | --- | --- | --- | --- | --- | --- | --- |
| 25 | 3.4 | **RF Shielding Installation** | 40d | 2028-07-21 | 2028-09-18 | 24FS+16w | 0d |  |  | 1120h |
| 26 | 3.4.1 | MRI Room RF Fit-out | 6w | 2028-07-21 | 2028-09-04 | 24FS+16w | 10d |  | Construction Team; Technitians | 480h |
| 27 | 3.4.2 | Control and Plant Room RF Works | 5w | 2028-07-21 | 2028-08-28 | 24FS+16w | 0d |  | Construction Team; Technitians | 400h |
| 28 | 3.4.3 | Quality Assurance and Initial RF Tests | 3w | 2028-08-28 | 2028-09-18 | 27 | 0d |  | Technitians; Construction Team | 240h |
| 29 | 3.5 | Finishes & Fit-Out | 8w | 2028-04-27 | 2028-08-21 | 24FS+2w | 15d | Reduced Hours During Demolition | Technitians; Construction Team | 640h |
| 30 | 3.6 | MRI Equipment Delivery & Rigging | 4w | 2028-09-18 | 2028-10-16 | 29, 25 | 0d |  | Technitians [200%]; Procurement Officers [50%] | 400h |
| 31 | 3.7 | **MRI Installation & Calibration** | 30d | 2028-10-16 | 2028-11-28 | 30 | 0d |  |  | 640h |
| 32 | 3.7.1 | Plant-room Equipment Installation and Testing | 2w | 2028-10-16 | 2028-10-31 | 30 | 20d |  | Construction Team; Technitians | 160h |
| 33 | 3.7.2 | MRI Room Magnet and Equipment Installation | 3w | 2028-10-23 | 2028-11-14 | 30FS+1w | 0d |  | Technitians; Construction Team | 240h |
| 34 | 3.7.3 | System Calibration and Safety Testing | 2w | 2028-11-14 | 2028-11-28 | 33 | 0d |  | Technitians [200%]; Project management group | 240h |
| 35 | 3.8 | Commissioning & Validation | 6w | 2028-11-28 | 2029-01-17 | 31 | 0d |  | Technitians; Project management group | 480h |
| 36 | 3.9 | Handover & Close-out | 4w | 2029-01-17 | 2029-02-15 | 35 | 0d |  | Project management group | 160h |

Notes:
- 25: Dealyed 14-16 wks
- 29: Reduced Working Hours due to Clinic hours / Some work can still be completed before RF Shielding is installed
