# Management_Project_2

Schedule from MS Project, 2025-10-20 to 2029-03-08.

## Calendars

- TCD Holidays: Mon-Fri 08:00-12:00, 13:00-17:00; Sat-Sun off. Exceptions (off unless hours are given): 2025-10-27 to 2034-10-30 (October Bank Holidays, recurring), 2025-12-27 to 2025-12-31 (Christmas Holidays), 2026-01-01 to 2035-01-01 (New Years Day, recurring), 2026-04-06 (Easter Monday), 2026-10-26 to 2035-12-25 (Christmas Day, recurring), 2026-10-26 to 2035-12-26 (St. Stephen's Day, recurring), 2026-10-26 to 2036-02-04 (St. Bridget's Day, recurring), 2026-10-26 to 2036-03-17 (St Patricks Day, recurring), 2026-10-26 to 2036-05-05 (May Day, recurring), 2026-12-26 to 2036-06-02 (June Bank Holiday, recurring), 2026-12-26 to 2036-08-04 (August Bank Holiday, recurring), 2026-12-27 to 2026-12-31 (Christmas Holidays), 2027-03-29 (Easter Monday), 2027-12-27 to 2027-12-31 (Christmas Holidays), 2028-04-19 (Easter Monday), 2028-12-27 to 2028-12-31 (Christmas Holidays).
- Reduced Hours During Demolition: Mon-Fri 12:00-16:00; Sat-Sun off. Exceptions (off unless hours are given): 2025-10-27 to 2034-10-30 (October Bank Holidays, recurring), 2025-12-27 to 2025-12-31 (Christmas Holidays), 2026-01-01 to 2035-01-01 (New Years Day, recurring), 2026-04-06 (Easter Monday), 2026-10-26 to 2035-12-25 (Christmas Day, recurring), 2026-10-26 to 2035-12-26 (St. Stephen's Day, recurring), 2026-10-26 to 2036-02-04 (St. Bridget's Day, recurring), 2026-10-26 to 2036-03-17 (St Patricks Day, recurring), 2026-10-26 to 2036-05-05 (May Day, recurring), 2026-12-26 to 2036-06-02 (June Bank Holiday, recurring), 2026-12-26 to 2036-08-04 (August Bank Holiday, recurring), 2026-12-27 to 2026-12-31 (Christmas Holidays), 2027-03-29 (Easter Monday), 2027-12-27 to 2027-12-31 (Christmas Holidays), 2028-04-19 (Easter Monday), 2028-12-27 to 2028-12-31 (Christmas Holidays).

## Schedule

| ID | WBS | Task | Type | Duration | Start | Finish | Predecessors | Baseline start | Baseline finish | Baseline duration | Total slack | Free slack | Constraint | Calendar |
| --- | --- | --- | --- | --- | --- | --- | --- | --- | --- | --- | --- | --- | --- | --- |
| 1 | 1 | **Planning and Approvals** |  | 210d | 2025-10-20 | 2026-08-17 |  | 2025-10-20 | 2026-08-17 | 0d | 0.5d |  |  |  |
| 2 | 1.1 | Needs Assessment and Feasibility Study (22339628, 22335485, 22335987) |  | 6w | 2025-10-20 | 2025-12-01 |  | 2025-10-20 | 2025-12-01 | 0d | 0.5d | 0d |  |  |
| 3 | 1.2 | Equipment Specification with vendor |  | 8w | 2025-12-02 | 2026-01-30 | 2 | 2025-12-02 | 2026-01-30 | 0d | 0.5d | 0d |  |  |
| 4 | 1.3 | Radiation Safety & RF shielding review |  | 6w | 2026-02-02 | 2026-03-13 | 3 | 2026-02-02 | 2026-03-13 | 0d | 0.5d | 0d |  |  |
| 5 | 1.4 | Hospital Design Control Committee Approval |  | 2w | 2026-03-16 | 2026-03-27 | 4 | 2026-03-16 | 2026-03-27 | 0d | 0.5d | 0d |  |  |
| 6 | 1.5 | Planning & Fire Cert submission | milestone | 0d | 2026-03-27 | 2026-03-27 | 5 | 2026-03-27 | 2026-03-27 | 0d | 0.5d | 0d |  |  |
| 7 | 1.6 | Approval Received |  | 20w | 2026-03-30 | 2026-08-17 | 6 | 2026-03-30 | 2026-08-17 | 0d | 0.5d | 0d |  |  |
| 8 | 2 | **Design & Procurement** |  | 250d | 2026-08-18 | 2027-08-19 |  | 2026-08-18 | 2027-08-19 | 0d | 0.5d |  |  |  |
| 9 | 2.1 | Detailed architechture & services design |  | 8w | 2026-08-18 | 2026-10-12 | 7 | 2026-08-18 | 2026-10-12 | 0d | 0.5d | 0d |  |  |
| 10 | 2.2 | **M&E Coordination(HVAC, Electrical, Cooling)** |  | 50d | 2026-10-13 | 2026-12-22 | 9 | 2026-10-13 | 2026-12-22 | 0d | 0.5d | 0d |  |  |
| 11 | 2.2.1 | M&E Information and Constraints Review |  | 2w | 2026-10-13 | 2026-10-27 | 9 | 2026-10-13 | 2026-10-27 | 0d | 0.5d | 0d |  |  |
| 12 | 2.2.2 | Develop Initial M&E Layouts |  | 6w | 2026-10-28 | 2026-12-08 | 11 | 2026-10-28 | 2026-12-08 | 0d | 0.5d | 0d |  |  |
| 13 | 2.2.3 | Clash Resolution, Shutdown Strategy and Final Sign-off |  | 6w | 2026-11-11 | 2026-12-22 | 12SS+2w | 2026-11-11 | 2026-12-22 | 0d | 0.5d |  | finish no earlier than 2026-10-13 |  |
| 14 | 2.3 | **RF Shielding Design & Testing Plan** |  | 30d | 2026-12-23 | 2027-02-11 | 10 | 2026-12-23 | 2027-02-11 | 0d | 0.5d | 0d |  |  |
| 15 | 2.3.1 | RF Requirements Review and Conceptual Layout |  | 2w | 2026-12-23 | 2027-01-13 | 10 | 2026-12-23 | 2027-01-13 | 0d | 0.5d | 0d |  |  |
| 16 | 2.3.2 | RF Enclosure Design and Costing |  | 4w | 2027-01-07 | 2027-02-04 | 15SS+1w | 2027-01-07 | 2027-02-04 | 0d | 0.5d | 0d |  |  |
| 17 | 2.3.3 | RF Procurement, Schedule, and Testing Plan |  | 4w | 2027-01-14 | 2027-02-11 | 16SS+1w | 2027-01-14 | 2027-02-11 | 0d | 0.5d |  |  |  |
| 18 | 2.4 | Equipment Procurement (MRI & Ancillaries) |  | 16w | 2027-02-12 | 2027-06-09 | 14 | 2027-02-12 | 2027-06-09 | 0d | 0.5d | 0d |  |  |
| 19 | 2.5 | Tender for Construction Works |  | 6w | 2027-06-10 | 2027-07-21 | 18 | 2027-06-10 | 2027-07-21 | 0d | 0.5d | 0d |  |  |
| 20 | 2.6 | Contractor Mobilisation |  | 4w | 2027-07-22 | 2027-08-19 | 19 | 2027-07-22 | 2027-08-19 | 0d | 0.5d | 0d |  |  |
| 21 | 3 | **Construction & Isolation** |  | 384.88d | 2027-08-20 | 2029-03-08 | 20 | 2027-08-20 | 2029-04-19 | 0d | 0d |  |  |  |
| 22 | 3.1 | Site Set-Up & Isolation Works |  | 4w | 2027-08-20 | 2027-09-16 | 20 | 2027-08-20 | 2027-09-16 | 0d | 0.5d |  |  |  |
| 23 | 3.2 | Demolition & Refurbishment |  | 8w | 2027-09-17 | 2028-01-14 | 22 | 2027-09-17 | 2028-01-14 | 0d | 0.12d | 0d |  | Reduced Hours During Demolition |
| 24 | 3.3 | M&E Rough-In (Cabling, Piping, HVAC) |  | 10w | 2028-01-14 | 2028-03-28 | 23 | 2028-01-14 | 2028-03-28 | 0d | 0.62d | 0d |  |  |

Notes:
- 23: Reduced Working Hours Due to Outpatient Clinic Hours

| ID | WBS | Task | Duration | Start | Finish | Predecessors | Baseline start | Baseline finish | Baseline duration | Total slack | Free slack | Calendar |
| --- | --- | --- | --- | --- | --- | --- | --- | --- | --- | --- | --- | --- |
| 25 | 3.4 | **RF Shielding Installation** | 105d | 2028-03-28 | 2028-08-28 | 24 | 2028-03-28 | 2028-08-28 | 0d | 0.62d |  |  |
| 26 | 3.4.1 | RF Grounding and structure | 3w | 2028-03-28 | 2028-04-18 | 24 | 2028-03-28 | 2028-04-18 | 0d | 90.62d |  |  |
| 27 | 3.4.2 | Shielding installation | 3w | 2028-07-21 | 2028-08-14 | 24FS+16w | 2028-07-21 | 2028-08-14 | 0d | 0.62d | 0d |  |
| 28 | 3.4.3 | Quality Assurance and Initial RF Tests | 2w | 2028-08-14 | 2028-08-28 | 27 | 2028-08-14 | 2028-08-28 | 0d | 0.62d |  |  |
| 29 | 3.5 | Finishes & Fit-Out | 6w | 2028-08-29 | 2028-11-21 | 25 | 2028-08-29 | 2028-11-21 | 0d | 0d |  | Reduced Hours During Demolition |
| 30 | 3.6 | MRI Equipment Delivery & Rigging | 4w | 2028-04-18 | 2028-05-18 | 26 | 2028-11-21 | 2028-12-19 | 0d | 125d | 0d |  |
| 31 | 3.7 | **MRI Installation & Calibration** | 150d | 2028-05-18 | 2028-12-19 | 24 | 2028-12-19 | 2029-02-08 | 0d | 0d |  |  |
| 32 | 3.7.1 | Plant-room Equipment Installation and Testing | 3w | 2028-05-18 | 2028-06-09 | 30 | 2028-12-19 | 2029-01-10 | 0d | 125d |  |  |
| 33 | 3.7.2 | MRI Room Magnet and Equipment Installation | 3w | 2028-11-21 | 2028-12-12 | 29, 32SS+1w | 2029-01-03 | 2029-01-24 | 0d | 0d |  |  |
| 34 | 3.7.3 | System Calibration and Safety Testing | 1w | 2028-12-12 | 2028-12-19 | 33 | 2029-01-24 | 2029-02-08 | 0d | 0d |  |  |
| 35 | 3.8 | Commissioning & Validation | 6w | 2028-12-19 | 2029-02-08 | 34 | 2029-02-08 | 2029-03-22 | 0d | 0d |  |  |
| 36 | 3.9 | Handover & Close-out | 4w | 2029-02-08 | 2029-03-08 | 35 | 2029-03-22 | 2029-04-19 | 0d | 0d |  |  |

Notes:
- 25: Dealyed 14-16 wks
- 29: Reduced Working Hours due to Clinic hours
